# Versão 7

Schedule from MS Project, 2022-06-27 to 2022-09-20, status date 2022-05-12.
Microsoft

## Calendars

- Padrão: Mon-Fri 09:00-12:00, 13:00-18:00; Sat-Sun off. Exceptions (off unless hours are given): 2016-09-07 to 2025-09-07 (Independência do Brasil, recurring), 2016-10-12 to 2025-10-12 (Padroeira do Brasil, recurring), 2016-11-02 to 2025-11-02 (Finados, recurring), 2016-12-25 to 2025-12-25 (Natal, recurring), 2017-01-01 to 2026-01-01 (Ano Novo, recurring), 2017-01-25 to 2026-01-25 (Aniversário de São Paulo, recurring), 2017-04-21 to 2026-04-21 (Tiradentes, recurring), 2017-05-01 to 2026-05-01 (Dia do Trabalho, recurring), 2019-04-22 to 2028-04-22 (Descobrimento do Brasil, recurring), 2019-12-24 to 2029-06-20 (Ponte Ano Natal, recurring).

## Resources

| Resource |
| --- |
| Elaw - Gerente de Projetos |
| Elaw - Infraestrutura |
| Elaw - Raphael Lincoln |
| Americanas - Jurídico Cível |
| Americanas - Gerente de Projetos |
| Americanas - Engenharia |
| Elaw - Natália Tonini |
| Elaw - Produtos |
| Elaw - Consultor |
| Elaw - Integração |
| BR - Jurídico |
| Americanas - Jurídico Trabalhista |
| Elaw - ElawView |
| Cliente - Jurídico |

## Schedule

| ID | WBS | Task | Type | Duration | Start | Finish | Predecessors | Baseline start | Baseline finish | Baseline duration | Total slack | Free slack | Constraint | Resources | Work | Forecast Elaw |
| --- | --- | --- | --- | --- | --- | --- | --- | --- | --- | --- | --- | --- | --- | --- | --- | --- |
| 1 | 1 | **MÓDULO CONTRATOS** |  | 61d? | 2022-06-27 | 2022-09-20 |  | 2022-05-23 | 2022-08-23 | 66d | 0d |  |  |  | 880h | 0% |
| 2 | 1.1 | **Fase 1 - Preparação Inicial e testes Contratos - Contratos Gerais** |  | 45d? | 2022-06-27 | 2022-08-26 |  | 2022-05-23 | 2022-07-19 | 41d |  |  |  |  | 48h | 0% |
| 3 | 1.1.1 | **1.1 Demonstração e Homologação do módulo** |  | 42d | 2022-06-27 | 2022-08-23 |  | 2022-05-23 | 2022-07-13 | 37d | 19d |  |  |  | 48h | 0% |
| 4 | 1.1.1.1 | Reunião de demonstração e adaptação do sistema |  | 5d | 2022-06-27 | 2022-07-01 |  | 2022-05-23 | 2022-06-03 | 10d | 51d | 0d | start no earlier than 2022-06-21 | Elaw - Raphael Lincoln | 40h | 0% |
| 5 | 1.1.1.2 | Envio das minutas para parametrização do Elaw |  | 5d | 2022-07-04 | 2022-07-08 | 4 | 2022-06-06 | 2022-06-17 | 10d | 51d |  |  |  |  | 0% |
| 6 | 1.1.1.3 | Parametrização das minutas no sistema |  | 6d | 2022-08-08 | 2022-08-15 |  | 2022-06-21 | 2022-07-04 | 10d | 0d |  | start no earlier than 2022-08-08 |  |  | 0% |
| 7 | 1.1.1.4 | Envio do fluxo para parametrização do Elaw |  | 2d | 2022-08-08 | 2022-08-09 |  |  |  |  | 29d |  | start no earlier than 2022-08-08 |  |  | 0% |
| 8 | 1.1.1.5 | Parametrização do fluxo no sistema |  | 2d | 2022-08-08 | 2022-08-09 |  | 2022-07-14 | 2022-07-15 | 2d | 29d |  | start no earlier than 2022-08-08 |  |  | 0% |
| 9 | 1.1.1.6 | Homologação do sistema |  | 5d | 2022-08-16 | 2022-08-22 | 6 | 2022-07-05 | 2022-07-11 | 5d | 0d |  |  |  |  | 0% |
| 10 | 1.1.1.7 | Envio da planilha de Migração para preenchimento |  | 1d | 2022-08-23 | 2022-08-23 | 9 | 2022-08-11 | 2022-08-11 | 1d | 19d |  |  |  |  | 0% |
| 11 | 1.1.1.8 | Assinatura do Termo de Homologação |  | 1d | 2022-08-23 | 2022-08-23 | 9 | 2022-07-13 | 2022-07-13 | 1d | 0d |  |  | Elaw - Raphael Lincoln | 8h | 0% |
| 12 | 1.1.1.9 | Homologação concluída | milestone | 0d | 2022-08-23 | 2022-08-23 | 11 | 2022-07-13 | 2022-07-13 | 0d | 0d |  |  | Elaw - Raphael Lincoln |  | 0% |
| 13 | 1.2 | **Fase 3 - Preparação Final Contratos** |  | 17d | 2022-08-24 | 2022-09-16 |  | 2022-07-20 | 2022-08-19 | 23d | 0d |  |  | Elaw - Raphael Lincoln | 808h | 0% |
| 14 | 1.2.1 | **3.1 Publicação de Ambiente em Produção** |  | 6d | 2022-08-24 | 2022-08-31 | 12 | 2022-08-11 | 2022-08-19 | 7d | 0d |  |  | Elaw - Raphael Lincoln; Americanas - Gerente de Projetos; Americanas - Jurídico Cível | 144h | 0% |
| 15 | 1.2.1.1 | Abertura de chamado para piblicação de ambiente |  | 3d | 2022-08-24 | 2022-08-26 | 11 | 2022-08-11 | 2022-08-11 | 1d | 0d |  |  |  |  | 0% |
| 16 | 1.2.1.2 | Deletar Id teste | milestone | 2d | 2022-08-29 | 2022-08-30 | 15 | 2022-08-12 | 2022-08-16 | 3d | 14d |  |  |  |  | 0% |
| 17 | 1.2.1.3 | Criação de novo ambiente de HM | milestone | 3d | 2022-08-29 | 2022-08-31 | 15 | 2022-08-12 | 2022-08-16 | 3d | 0d |  |  |  |  | 0% |
| 18 | 1.2.1.4 | Ambiente publicado | milestone | 0d | 2022-08-31 | 2022-08-31 | 17 | 2022-08-12 | 2022-08-16 | 3d | 0d |  |  |  |  | 0% |
| 19 | 1.2.2 | **3.2 Migração** |  | 11d | 2022-09-01 | 2022-09-16 | 12 | 2022-08-11 | 2022-08-19 | 7d | 0d |  |  | Elaw - Raphael Lincoln; Americanas - Gerente de Projetos; Americanas - Jurídico Cível | 264h | 0% |
| 20 | 1.2.2.1 | Recebimento da planilha para validação |  | 2d | 2022-09-01 | 2022-09-02 | 18 |  |  |  | 0d |  |  |  |  | 0% |
| 21 | 1.2.2.2 | Validação dos dados da planilha | milestone | 2d | 2022-09-05 | 2022-09-06 | 20 | 2022-08-12 | 2022-08-16 | 3d | 0d |  |  |  |  | 0% |
| 22 | 1.2.2.3 | Migração de Dados |  | 3d | 2022-09-08 | 2022-09-12 | 21 |  |  |  | 0d |  |  |  |  | 0% |
| 23 | 1.2.2.4 | Migração de documentos |  | 2d | 2022-09-13 | 2022-09-14 | 22 |  |  |  | 0d |  |  |  |  | 0% |
| 24 | 1.2.2.5 | Validação da Migração |  | 2d | 2022-09-15 | 2022-09-16 | 23 |  |  |  | 0d |  |  |  |  | 0% |
| 25 | 1.2.2.6 | Migração Concluída | milestone | 0d | 2022-09-16 | 2022-09-16 | 24 | 2022-08-19 | 2022-08-19 | 0d | 0d |  |  | Elaw - Raphael Lincoln |  | 0% |

| ID | WBS | Task | Type | Duration | Start | Finish | Predecessors | Baseline start | Baseline finish | Baseline duration | Total slack | Free slack | Resources | Work | Forecast Elaw |
| --- | --- | --- | --- | --- | --- | --- | --- | --- | --- | --- | --- | --- | --- | --- | --- |
| 26 | 1.2.3 | **3.3 Treinamentos** |  | 7d | 2022-09-01 | 2022-09-12 | 17 | 2022-08-11 | 2022-08-19 | 7d | 4d |  | Elaw - Raphael Lincoln; Americanas - Gerente de Projetos; Americanas - Jurídico Cível | 264h | 0% |
| 27 | 1.2.3.1 | Alinhamento da Pauta do Treinamento |  | 1d | 2022-09-01 | 2022-09-01 | 17 | 2022-08-11 | 2022-08-11 | 1d | 4d | 0d |  |  | 0% |
| 28 | 1.2.3.2 | Envio do manual do módulo | milestone | 3d | 2022-09-02 | 2022-09-06 | 27 | 2022-08-12 | 2022-08-16 | 3d | 4d | 0d |  |  | 0% |
| 29 | 1.2.3.3 | Treinamento |  | 3d | 2022-09-08 | 2022-09-12 | 28 | 2022-08-17 | 2022-08-19 | 3d | 4d | 0d | Americanas - Gerente de Projetos; Americanas - Jurídico Cível; Americanas - Engenharia; Elaw - Raphael Lincoln | 96h | 0% |
| 30 | 1.2.3.4 | Treinamentos finalizados | milestone | 0d | 2022-09-12 | 2022-09-12 | 29 | 2022-08-19 | 2022-08-19 | 0d | 4d |  | Elaw - Raphael Lincoln |  | 0% |
| 31 | 1.3 | **Fase 4 - Go-live Contratos** |  | 2d | 2022-09-19 | 2022-09-20 |  | 2022-08-22 | 2022-08-23 | 2d | 0d |  |  | 24h | 0% |
| 32 | 1.3.1 | **4.1 Go-Live** |  | 2d | 2022-09-19 | 2022-09-20 |  | 2022-08-22 | 2022-08-23 | 2d | 0d |  | Americanas - Engenharia | 24h | 0% |
| 33 | 1.3.1.1 | Envio de E-mail de liberação do ambiente |  | 1d | 2022-09-19 | 2022-09-19 | 30, 25 | 2022-08-22 | 2022-08-22 | 1d | 0d |  | Americanas - Jurídico Cível | 8h | 0% |
| 34 | 1.3.1.2 | Assinatura do Termo de Produção |  | 1d | 2022-09-20 | 2022-09-20 | 33 | 2022-08-23 | 2022-08-23 | 1d | 0d |  |  |  | 0% |
| 35 | 1.3.1.3 | Go Live Contratos | milestone | 0d | 2022-09-20 | 2022-09-20 | 34 | 2022-08-23 | 2022-08-23 | 0d | 0d |  | Elaw - Raphael Lincoln |  | 0% |
