# Nome do Projeto

Schedule from MS Project, 2022-08-15 to 2022-10-17, status date 2022-08-15.
Microsoft

## Calendars

- Padrão: Mon-Fri 09:00-12:00, 13:00-18:00; Sat-Sun off. Exceptions (off unless hours are given): 2016-09-07 to 2025-09-07 (Independência do Brasil, recurring), 2016-10-12 to 2025-10-12 (Padroeira do Brasil, recurring), 2016-11-02 to 2025-11-02 (Finados, recurring), 2016-12-25 to 2025-12-25 (Natal, recurring), 2017-01-01 to 2026-01-01 (Ano Novo, recurring), 2017-01-25 to 2026-01-25 (Aniversário de São Paulo, recurring), 2017-04-21 to 2026-04-21 (Tiradentes, recurring), 2017-05-01 to 2026-05-01 (Dia do Trabalho, recurring), 2019-04-22 to 2028-04-22 (Descobrimento do Brasil, recurring), 2019-12-24 to 2029-06-20 (Ponte Ano Natal, recurring).
- Calendario Com Feriados: Mon-Fri 09:00-12:00, 13:00-18:00; Sat-Sun off.

## Resources

| Resource |
| --- |
| Elaw - Gerente de Projetos |
| Elaw - Infraestrutura |
| Elaw - Suporte |
| Elaw - Juliene |
| Elaw - Configuração |
| Zenvia - Jurídico |
| Elaw - Operação Assistida |
| Zenvia - Gerente de Projetos |
| Elaw - Produtos |
| Elaw - PLSQL |
| Elaw - Operações |
| Cliente - Jurídico |
| Elaw - PMO |
| Elaw - Consultor |
| Cliente - Gerente de Projetos |
| Elaw - Integração |
| Elaw - Desenvolvimento |
| Zenvia - TI |
| Elaw - Eduardo |
| Harpia |
| Zenvia - Juridico |
| Zenvia - Harpia |

## Schedule

| ID | WBS | Task | Type | Duration | Start | Finish | Predecessors | Total slack | Free slack | Constraint | Calendar | Resources | Work | Forecast Elaw |
| --- | --- | --- | --- | --- | --- | --- | --- | --- | --- | --- | --- | --- | --- | --- |
| 1 | 1 | **Projeto Via V7** |  | 46d | 2022-08-15 | 2022-10-17 |  |  |  |  | Calendario Com Feriados |  | 672h | 0% |
| 2 | 1.1 | **Planejamento** |  | 3d | 2022-08-15 | 2022-08-17 |  |  |  |  |  |  | 32h | 0% |
| 3 | 1.1.1 | **1.1 Planejamento** |  | 3d | 2022-08-15 | 2022-08-17 |  | 41d |  |  |  |  | 32h | 0% |
| 4 | 1.1.1.1 | Planejamento do Projeto |  | 1d | 2022-08-15 | 2022-08-15 |  | 41d | 0d |  |  | Elaw - Gerente de Projetos; Zenvia - Gerente de Projetos | 16h | 0% |
| 5 | 1.1.1.2 | Aprovação do cronograma pelo cliente |  | 2d | 2022-08-16 | 2022-08-17 | 4 | 41d | 0d |  |  | Zenvia - Gerente de Projetos | 16h | 0% |
| 6 | 1.1.1.3 | Planejamento concluído | milestone | 0d | 2022-08-17 | 2022-08-17 | 5 | 41d |  |  |  |  |  | 0% |
| 7 | 1.2 | **Módulo Contratos V7** |  | 40d | 2022-08-15 | 2022-10-10 |  | 2d |  |  |  |  | 640h | 0% |
| 8 | 1.2.1 | **Sprint 1** |  | 40d | 2022-08-15 | 2022-10-10 |  | 2d |  |  |  |  | 640h | 0% |
| 9 | 1.2.1.1 | **Fase 2 - Preparação Inicial e testes** |  | 30d | 2022-08-15 | 2022-09-26 |  | 2d |  |  |  |  | 400h | 0% |
| 10 | 1.2.1.1.1 | **2.1 Mapeamento de Requisitos** |  | 7d | 2022-08-15 | 2022-08-23 |  | 4d |  |  |  |  | 96h | 0% |
| 11 | 1.2.1.1.1.1 | Mapeamento dos campos |  | 5d | 2022-08-15 | 2022-08-19 |  | 4d | 0d | start no earlier than 2022-08-15 |  | Elaw - Juliene; Zenvia - Jurídico | 80h | 0% |
| 12 | 1.2.1.1.1.2 | Mapeamento da nova minuta B2B |  | 2d | 2022-08-22 | 2022-08-23 | 11 | 4d | 0d |  |  | Elaw - Juliene | 16h | 0% |
| 13 | 1.2.1.1.1.3 | Mapeamento finalizado | milestone | 0d | 2022-08-23 | 2022-08-23 | 12 | 4d | 0d |  |  |  |  | 0% |
| 14 | 1.2.1.1.2 | **2.3 Parametrização do módulo** |  | 8d | 2022-08-24 | 2022-09-02 |  | 4d |  |  |  |  | 64h | 0% |
| 15 | 1.2.1.1.2.1 | Parametrização do sistema |  | 6d | 2022-08-24 | 2022-08-31 | 13 | 4d | 0d |  |  | Elaw - Juliene | 48h | 0% |
| 16 | 1.2.1.1.2.2 | Testes internos e ajustes |  | 2d | 2022-09-01 | 2022-09-02 | 15 | 4d | 0d |  |  | Elaw - Juliene | 16h | 0% |
| 17 | 1.2.1.1.2.3 | Ambiente pronto para Homologação | milestone | 0d | 2022-09-02 | 2022-09-02 | 16 | 4d | 0d |  |  |  |  | 0% |
| 18 | 1.2.1.1.3 | **2.5 Homologação do módulo** |  | 3d | 2022-08-17 | 2022-08-19 |  |  |  |  |  |  | 240h | 0% |
| 19 | 1.2.1.1.3.1 | Homologação do sistema |  | 15d | 2022-09-05 | 2022-09-26 | 17 | 4d | 0d |  |  | Elaw - Juliene; Zenvia - Jurídico | 240h | 0% |
| 20 | 1.2.1.1.3.2 | Assinatura do Termo de Homologação | milestone | 0d | 2022-09-26 | 2022-09-26 | 19 | 4d | 0d |  |  | Zenvia - Jurídico; Elaw - Juliene |  | 0% |
| 21 | 1.2.1.1.3.3 | Homologação Concluída | milestone | 0d | 2022-09-26 | 2022-09-26 | 20 | 4d | 0d |  |  |  |  | 0% |
| 22 | 1.2.1.2 | **Fase 3 - Preparação Final** |  | 36d | 2022-08-15 | 2022-10-04 |  | 8d |  |  |  |  | 96h | 0% |
| 23 | 1.2.1.2.1 | **3.1 Preparação do ambiente de Produção** |  | 36d | 2022-08-15 | 2022-10-04 |  | 8d |  |  |  |  | 48h | 0% |
| 24 | 1.2.1.2.1.1 | Parametrização do ambiente de produção |  | 5d | 2022-09-27 | 2022-10-03 | 21 | 8d | 0d |  |  | Elaw - PLSQL | 40h | 0% |
| 25 | 1.2.1.2.1.2 | Execução do Script |  | 1d | 2022-10-04 | 2022-10-04 | 24 | 8d |  |  |  | Elaw - Infraestrutura | 8h | 0% |
| 26 | 1.2.1.2.1.3 | Ambiente pronto para Produção | milestone | 0d | 2022-08-15 | 2022-08-15 |  | 44d |  |  |  |  |  | 0% |

| ID | WBS | Task | Type | Duration | Start | Finish | Predecessors | Total slack | Free slack | Resources | Work | Forecast Elaw |
| --- | --- | --- | --- | --- | --- | --- | --- | --- | --- | --- | --- | --- |
| 27 | 1.2.1.2.2 | **3.2 Treinamentos** |  | 4d | 2022-09-27 | 2022-09-30 | 21 | 4d |  |  | 48h | 0% |
| 28 | 1.2.1.2.2.1 | Alinhamento da Pauta do Treinamento |  | 1d | 2022-09-27 | 2022-09-27 | 21 | 4d | 0d | Elaw - Juliene; Zenvia - Jurídico | 16h | 0% |
| 29 | 1.2.1.2.2.2 | Envio do manual do módulo |  | 1d | 2022-09-28 | 2022-09-28 | 28 | 4d | 0d |  |  | 0% |
| 30 | 1.2.1.2.2.3 | Treinamento |  | 2d | 2022-09-29 | 2022-09-30 | 29 | 4d | 0d | Elaw - Juliene; Zenvia - Jurídico | 32h | 0% |
| 31 | 1.2.1.2.2.4 | Treinamentos finalizados | milestone | 0d | 2022-09-30 | 2022-09-30 | 30 | 4d | 0d |  |  | 0% |
| 32 | 1.2.1.3 | **Fase 4 - Go-live** |  | 6d | 2022-10-03 | 2022-10-10 |  | 4d |  |  | 80h | 0% |
| 33 | 1.2.1.3.1 | **4.1 Go-Live** |  | 1d | 2022-10-03 | 2022-10-03 |  | 4d |  |  | 16h | 0% |
| 34 | 1.2.1.3.1.1 | Envio de E-mail de liberação do ambiente |  | 1d | 2022-10-03 | 2022-10-03 | 31 | 4d | 0d | Elaw - Juliene; Zenvia - Juridico | 16h | 0% |
| 35 | 1.2.1.3.1.2 | Go-live Sprint 1 | milestone | 0d | 2022-10-03 | 2022-10-03 | 34 | 4d | 0d |  |  | 0% |
| 36 | 1.2.1.3.2 | **4.2 Documentação do módulo** |  | 5d | 2022-10-04 | 2022-10-10 |  | 4d |  |  | 64h | 0% |
| 37 | 1.2.1.3.2.1 | Elaboração do documentação de escopo |  | 2d | 2022-10-04 | 2022-10-05 | 35 | 4d | 0d | Elaw - Juliene | 16h | 0% |
| 38 | 1.2.1.3.2.2 | Leitura e assinatura do documento de escopo |  | 3d | 2022-10-06 | 2022-10-10 | 37 | 4d | 0d | Elaw - Juliene; Zenvia - Juridico | 48h | 0% |
| 39 | 1.2.1.3.2.3 | Documentação Finalizada | milestone | 0d | 2022-10-10 | 2022-10-10 | 38 | 4d |  |  |  | 0% |
| 40 | 1.2.1.4 | **Fase 5 - Migração** |  | 5d | 2022-10-04 | 2022-10-10 |  | 4d |  |  | 64h | 0% |
| 41 | 1.2.1.4.1 | Elaboração do documentação de escopo |  | 2d | 2022-10-04 | 2022-10-05 | 35 | 4d | 0d | Elaw - Juliene | 16h | 0% |
| 42 | 1.2.1.4.2 | Leitura e assinatura do documento de escopo |  | 3d | 2022-10-06 | 2022-10-10 | 41 | 4d | 0d | Elaw - Juliene; Zenvia - Juridico | 48h | 0% |
| 43 | 1.2.1.4.3 | Documentação Finalizada | milestone | 0d | 2022-10-10 | 2022-10-10 | 42 | 4d |  |  |  | 0% |
